# Tempest

Schedule from ProjectLibre, 2025-01-01 to 2025-11-18.

## Calendars

- Standard: Mon-Fri 08:00-12:00, 13:00-17:00; Sat-Sun off.

## Resources

| Resource | Rate |
| --- | --- |
| Unassigned |  |
| Program Director | 1300 |
| Project Manager | 900 |
| Lead Engineer | 1200 |
| Senior Developer - Game Tech | 900 |
| Senior Developer - Graphics | 900 |
| Developer - Modelling | 700 |
| Developer 2 - Art | 700 |
| Developer 3 - Game Tech | 700 |
| Developer 4 - Game Tech | 700 |
| Senior Test Analyst | 800 |
| Senior Test Analyst 2 | 800 |
| Platform Engineer | 900 |

## Schedule

| ID | WBS | Task | Duration | Start | Finish | Predecessors | Constraint | Resources |
| --- | --- | --- | --- | --- | --- | --- | --- | --- |
| 1 | 1 | **0.0 Tempest** | 230d | 2025-01-01 | 2025-11-18 |  | start no earlier than 2025-01-01 |  |
| 2 | 1.1 | **1.0 Pre-production** | 60d | 2025-01-01 | 2025-03-25 |  |  |  |
| 3 | 1.1.1 | **1.1 Game Concept and Design Document** | 20d | 2025-01-01 | 2025-01-28 |  |  |  |
| 4 | 1.1.1.1 | 1.1.1 Game Format | 5d | 2025-01-01 | 2025-01-07 |  | start no earlier than 2024-12-31 | Program Director [50%]; Project Manager [50%] |
| 5 | 1.1.1.2 | 1.1.2 Character Concept Designs | 10d | 2025-01-08 | 2025-01-21 | 4 |  | Program Director [50%]; Project Manager [50%] |
| 6 | 1.1.1.3 | 1.1.3 Game thematic ambience | 5d | 2025-01-22 | 2025-01-28 | 5 |  | Program Director [50%]; Project Manager [50%] |
| 7 | 1.1.2 | **1.2 Graphics and Art Styles** | 30d | 2025-01-29 | 2025-03-11 |  |  |  |
| 8 | 1.1.2.1 | 1.2.1 Art Style Design | 10d | 2025-01-29 | 2025-02-11 | 3 |  | Senior Developer - Graphics; Developer - Modelling; Developer 2 - Art |
| 9 | 1.1.2.2 | 1.2.2 Character and Skill Visual Design | 10d | 2025-02-12 | 2025-02-25 | 8 |  | Senior Developer - Graphics; Developer - Modelling; Developer 2 - Art |
| 10 | 1.1.2.3 | 1.2.3 Terrain Landscape Design | 5d | 2025-02-26 | 2025-03-04 | 9 |  | Senior Developer - Graphics; Developer - Modelling; Developer 2 - Art |
| 11 | 1.1.2.4 | 1.2.4 User Interface (UI) Design | 5d | 2025-03-05 | 2025-03-11 | 10 |  | Senior Developer - Graphics; Developer - Modelling; Developer 2 - Art |
| 12 | 1.1.3 | **1.3 Gameplay/Combat System Design** | 30d | 2025-01-29 | 2025-03-11 |  |  |  |
| 13 | 1.1.3.1 | 1.3.1 Combo/Stagger Mechanics | 10d | 2025-01-29 | 2025-02-11 | 3 |  | Senior Developer - Game Tech; Developer 3 - Game Tech; Developer 4 - Game Tech |
| 14 | 1.1.3.2 | 1.3.2 Status Ailment/Enhancement Mechanics | 5d | 2025-02-12 | 2025-02-18 | 13 |  | Senior Developer - Game Tech; Developer 3 - Game Tech; Developer 4 - Game Tech |
| 15 | 1.1.3.3 | 1.3.3 Item/Power-up Design | 5d | 2025-02-19 | 2025-02-25 | 14 |  | Senior Developer - Game Tech; Developer 3 - Game Tech; Developer 4 - Game Tech |
| 16 | 1.1.3.4 | 1.3.4 Character Movement Design | 10d | 2025-02-26 | 2025-03-11 | 15 |  | Senior Developer - Game Tech; Developer 3 - Game Tech; Developer 4 - Game Tech |
| 17 | 1.1.4 | Completion of Game Design Concept | 0d | 2025-03-11 | 2025-03-11 | 12, 7, 3 |  |  |
| 18 | 1.1.5 | **1.4 Logistics and Operation** | 40d | 2025-01-29 | 2025-03-25 |  |  |  |
| 19 | 1.1.5.1 | 1.4.1 Server Infrastructure Design | 20d | 2025-01-29 | 2025-02-25 | 3 |  | Platform Engineer |
| 20 | 1.1.5.2 | 1.4.2 Anti-cheat Design | 20d | 2025-02-26 | 2025-03-25 | 19 |  | Platform Engineer |
| 21 | 1.2 | Completion of Pre-production | 0d | 2025-03-25 | 2025-03-25 | 18, 17 |  |  |
| 22 | 1.3 | **2.0 Production** | 140d | 2025-03-12 | 2025-09-23 |  |  |  |
| 23 | 1.3.1 | **2.1 Map Terrain Development/Design** | 80d | 2025-03-12 | 2025-07-01 |  |  |  |
| 24 | 1.3.1.1 | 2.1.1 Visual Environment | 80d | 2025-03-12 | 2025-07-01 | 17 |  | Senior Developer - Graphics [50%]; Developer 2 - Art [50%] |
| 25 | 1.3.1.2 | 2.1.2 Pathable Terrain Design | 80d | 2025-03-12 | 2025-07-01 | 17 |  | Senior Developer - Graphics [50%]; Developer 2 - Art [50%] |

| ID | WBS | Task | Duration | Start | Finish | Predecessors | Resources |
| --- | --- | --- | --- | --- | --- | --- | --- |
| 26 | 1.3.2 | **2.2 Character Model/Physics** | 60d | 2025-03-12 | 2025-06-03 |  |  |
| 27 | 1.3.2.1 | 2.2.1 3-D Model of Characters | 20d | 2025-03-12 | 2025-04-08 | 17 | Senior Developer - Game Tech; Developer - Modelling |
| 28 | 1.3.2.2 | 2.2.2 Physics of Characters | 20d | 2025-04-09 | 2025-05-06 | 27 | Senior Developer - Game Tech; Developer - Modelling |
| 29 | 1.3.2.3 | 2.2.3 Character Animations | 20d | 2025-05-07 | 2025-06-03 | 28, 27 | Senior Developer - Game Tech; Developer - Modelling |
| 30 | 1.3.3 | **2.3 Core Gameplay Systems Development** | 100d | 2025-03-12 | 2025-07-29 |  |  |
| 31 | 1.3.3.1 | 2.3.1 Gameplay Mechanics and Skills | 60d | 2025-03-12 | 2025-06-03 | 17 | Lead Engineer; Developer 3 - Game Tech; Developer 4 - Game Tech |
| 32 | 1.3.3.2 | 2.3.2 Playable Character Combat Integration | 20d | 2025-06-04 | 2025-07-01 | 31, 26 | Lead Engineer; Developer 3 - Game Tech; Developer 4 - Game Tech |
| 33 | 1.3.3.3 | 2.3.3 UI/UX | 20d | 2025-07-02 | 2025-07-29 | 32 | Developer - Modelling |
| 34 | 1.3.3.4 | 2.3.4 Initial Game Balance | 20d | 2025-07-02 | 2025-07-29 | 32 | Developer 3 - Game Tech; Developer 4 - Game Tech |
| 35 | 1.3.4 | Completion of Core Game | 0d | 2025-07-29 | 2025-07-29 | 30, 26, 23 |  |
| 36 | 1.3.5 | **2.4 Sound Systems** | 60d | 2025-07-02 | 2025-09-23 |  |  |
| 37 | 1.3.5.1 | 2.4.1 Music Composing | 30d | 2025-07-02 | 2025-08-12 | 23 | Developer 2 - Art |
| 38 | 1.3.5.2 | 2.4.2 Sound Effect Design | 30d | 2025-08-13 | 2025-09-23 | 32, 37 | Developer 2 - Art |
| 39 | 1.3.6 | **2.5 Logistics and Operations** | 40d | 2025-07-30 | 2025-09-23 |  |  |
| 40 | 1.3.6.1 | 2.5.1 Server Infrastructure | 20d | 2025-07-30 | 2025-08-26 | 35, 21 | Platform Engineer |
| 41 | 1.3.6.2 | 2.5.2 Matchmaking System | 20d | 2025-08-27 | 2025-09-23 | 40 | Platform Engineer |
| 42 | 1.3.6.3 | 2.5.3 Tutorial | 15d | 2025-07-30 | 2025-08-19 | 35 | Developer - Modelling [50%]; Senior Developer - Game Tech [50%] |
| 43 | 1.3.6.4 | 2.5.4 Anti-Cheat System | 25d | 2025-08-20 | 2025-09-23 | 42 | Platform Engineer |
| 44 | 1.4 | 3.0 Testing/Bug-Fixing | 40d | 2025-09-24 | 2025-11-18 | 36, 39 | Senior Test Analyst; Senior Test Analyst 2 |
| 45 | 1.5 | Game Beta Launch Ready | 0d | 2025-11-18 | 2025-11-18 | 44 |  |
